# 项目计划V0.1

Schedule from MS Project, 2017-09-14 to 2017-12-29.

## Calendars

- 标准: Mon-Fri 08:00-12:00, 13:00-17:00; Sat-Sun off. Exceptions (off unless hours are given): 2017-09-16 to 2017-09-17 08:00-12:00, 13:00-17:00, 2017-09-30 08:00-12:00, 13:00-17:00 (十一放假调整), 2017-10-02 to 2017-10-06 (十一中秋放假).

## Resources

| Resource |
| --- |
| 架构师 |
| 项目经理 |
| 项目总监 |
| 业务分析 |
| 模型架构师 |
| ETL工程师 |
| UI设计师 |
| Java开发工程师 |
| 前端开发工程师 |
| 测试 |
| 整体团队 |
| ETL工程师1 |
| ETL工程师2 |
| 移动开发工程师 |

## Schedule

| ID | WBS | Task | Duration | Start | Finish | Predecessors | Total slack | Free slack | Constraint | Resources | Work |
| --- | --- | --- | --- | --- | --- | --- | --- | --- | --- | --- | --- |
| 1 | 1 | **准备** | 9d | 2017-09-14 | 2017-09-22 |  | 6d |  |  |  | 120h |
| 2 | 1.1 | 环境搭建 | 5d | 2017-09-18 | 2017-09-22 |  | 42d | 0d | start no earlier than 2017-09-18 | 架构师 | 40h |
| 3 | 1.2 | 计划制定 | 3d | 2017-09-15 | 2017-09-17 |  | 5d | 0d | finish no earlier than 2017-09-17 | 项目经理 | 24h |
| 4 | 1.3 | 团队搭建 | 2d | 2017-09-14 | 2017-09-15 |  | 7d | 2d | start no earlier than 2017-09-14 | 项目总监 | 16h |
| 5 | 1.4 | 风险识别 | 3d | 2017-09-18 | 2017-09-20 | 4, 3 | 66d | 0d |  | 整体团队 | 24h |
| 6 | 1.5 | 干系人登记 | 2d | 2017-09-21 | 2017-09-22 | 4, 3, 5 | 66d |  |  | 整体团队 | 16h |
| 7 | 2 | **需求分析-大宗类** | 12d? | 2017-09-18 | 2017-10-09 | 4, 3 | 5d | 0d |  |  | 184h |
| 8 | 2.1 | **业务需求** | 12d? | 2017-09-18 | 2017-10-09 |  | 5d | 0d |  |  | 152h |
| 9 | 2.1.1 | 监控全景 | 1d? | 2017-09-18 | 2017-09-18 |  | 10d | 0d |  | 业务分析 | 8h |
| 10 | 2.1.2 | **机构透视** | 4d | 2017-09-19 | 2017-09-22 | 9 | 10d |  |  |  | 32h |
| 11 | 2.1.2.1 | 风险画像 | 3d | 2017-09-19 | 2017-09-21 |  | 10d | 0d |  | 项目经理 | 24h |
| 12 | 2.1.2.2 | 指标比对 | 1d | 2017-09-22 | 2017-09-22 | 11 | 10d | 0d |  | 项目经理 | 8h |
| 13 | 2.1.3 | **风险分析** | 8d | 2017-09-18 | 2017-09-27 |  | 5d | 0d |  |  | 64h |
| 14 | 2.1.3.1 | 客户风险分析 | 1d | 2017-09-18 | 2017-09-18 |  | 5d | 0d |  | 业务分析 | 8h |
| 15 | 2.1.3.2 | 资金异动监控 | 1d | 2017-09-19 | 2017-09-19 | 14 | 5d | 0d |  | 业务分析 | 8h |
| 16 | 2.1.3.3 | 可疑交易监控 | 1d | 2017-09-20 | 2017-09-20 | 15 | 5d | 0d |  | 业务分析 | 8h |
| 17 | 2.1.3.4 | 市场舆情监控 | 2d | 2017-09-21 | 2017-09-22 | 16 | 5d | 0d |  | 业务分析 | 16h |
| 18 | 2.1.3.5 | 交易商品监控 | 1d | 2017-09-25 | 2017-09-25 | 17 | 5d | 0d |  | 业务分析 | 8h |
| 19 | 2.1.3.6 | 工商信息监控 | 1d | 2017-09-26 | 2017-09-26 | 18 | 5d | 0d |  | 业务分析 | 8h |
| 20 | 2.1.3.7 | 业务异常监控 | 1d | 2017-09-27 | 2017-09-27 | 19 | 5d |  |  | 业务分析 | 8h |
| 21 | 2.1.4 | **数据报表** | 1d? | 2017-09-28 | 2017-09-28 | 13 | 5d |  |  |  | 8h |
| 22 | 2.1.4.1 | 业务统览 | 1d? | 2017-09-28 | 2017-09-28 |  | 5d | 0d |  | 业务分析 | 8h |
| 23 | 2.1.5 | 风控报告 | 2d | 2017-09-25 | 2017-09-26 | 12 | 10d |  |  | 业务分析 | 16h |
| 24 | 2.1.6 | 基本信息管理 | 3d | 2017-09-29 | 2017-10-09 | 22 | 5d |  |  | 业务分析 | 24h |

| ID | WBS | Task | Duration | Start | Finish | Predecessors | Total slack | Free slack | Constraint | Resources | Work |
| --- | --- | --- | --- | --- | --- | --- | --- | --- | --- | --- | --- |
| 25 | 2.2 | **技术需求** | 4d? | 2017-09-25 | 2017-09-28 |  | 42d | 0d |  |  | 32h |
| 26 | 2.2.1 | 源系统状况 | 1d? | 2017-09-25 | 2017-09-25 | 2 | 42d | 0d |  | 架构师 | 8h |
| 27 | 2.2.2 | 现数据仓库状况 | 2d | 2017-09-26 | 2017-09-27 | 26 | 42d | 0d |  | 架构师 | 16h |
| 28 | 2.2.3 | 未来技术要求 | 1d? | 2017-09-28 | 2017-09-28 | 27 | 42d |  |  | 架构师 | 8h |
| 29 | 3 | **设计** | 30d | 2017-09-19 | 2017-11-03 |  | 16d |  |  |  | 384h |
| 30 | 3.1 | 整体架构设计 | 5d | 2017-09-29 | 2017-10-11 | 25 | 57d |  |  | 架构师 | 40h |
| 31 | 3.2 | 数据仓库设计 | 5d | 2017-10-10 | 2017-10-16 | 8 | 22d | 0d |  | 模型架构师 | 40h |
| 32 | 3.3 | ETL设计 | 5d | 2017-10-10 | 2017-10-16 | 8 | 8d | 0d |  | ETL工程师 | 40h |
| 33 | 3.4 | UI设计 | 30d | 2017-09-19 | 2017-11-03 | 9 | 40d |  |  | UI设计师 | 240h |
| 34 | 3.5 | 数据接口设计 | 3d | 2017-10-10 | 2017-10-12 | 8 | 5d | 0d |  | Java开发工程师 | 24h |
| 35 | 4 | **开发** | 50d | 2017-09-18 | 2017-11-30 |  | 0d |  |  |  | 1208h |
| 36 | 4.1 | **数据仓库建模** | 11d | 2017-10-17 | 2017-10-31 | 31 | 22d |  |  |  | 88h |
| 37 | 4.1.1 | 事实表 | 3d | 2017-10-17 | 2017-10-19 |  | 22d | 0d |  | 模型架构师 | 24h |
| 38 | 4.1.2 | 维度表 | 2d | 2017-10-20 | 2017-10-23 | 37 | 22d | 0d |  | 模型架构师 | 16h |
| 39 | 4.1.3 | 基本信息表 | 2d | 2017-10-24 | 2017-10-25 | 38 | 22d | 0d |  | 模型架构师 | 16h |
| 40 | 4.1.4 | 前端展示表 | 2d | 2017-10-26 | 2017-10-27 | 39 | 22d | 0d |  | 模型架构师 | 16h |
| 41 | 4.1.5 | 系统信息配置表 | 2d | 2017-10-30 | 2017-10-31 | 40 | 22d |  |  | 模型架构师 | 16h |
| 42 | 4.2 | ETL开发 | 25d | 2017-10-17 | 2017-11-20 | 32 | 8d |  |  | ETL工程师1; ETL工程师2 | 400h |
| 43 | 4.3 | 前端报表开发 | 50d | 2017-09-18 | 2017-11-30 |  | 0d |  | start no earlier than 2017-09-18 | 前端开发工程师 | 400h |
| 44 | 4.4 | 微信端接口开发 | 10d | 2017-10-09 | 2017-10-20 |  | 29d |  | start no earlier than 2017-10-09 | 移动开发工程师 | 80h |
| 45 | 4.5 | 接口开发 | 30d | 2017-10-13 | 2017-11-23 | 34 | 5d |  |  | Java开发工程师 | 240h |
| 46 | 5 | **测试** | 53d | 2017-10-10 | 2017-12-21 |  | 0d |  |  |  | 304h |
| 47 | 5.1 | 测试计划制定 | 3d | 2017-10-10 | 2017-10-12 | 8 | 30d | 0d |  | 测试 | 24h |
| 48 | 5.2 | 测试用例编写 | 20d | 2017-10-13 | 2017-11-09 | 47 | 30d |  |  | 测试 | 160h |
| 49 | 5.3 | SIT | 10d | 2017-12-01 | 2017-12-14 | 35 | 0d |  |  | 测试 | 80h |
| 50 | 5.4 | UAT | 5d | 2017-12-15 | 2017-12-21 | 49 | 0d |  |  | 测试 | 40h |

Notes:
- 31: 1. 分层设计 / 2. 主题设计 / 3. 规范建立

| ID | WBS | Task | Type | Duration | Start | Finish | Predecessors | Total slack | Resources | Work |
| --- | --- | --- | --- | --- | --- | --- | --- | --- | --- | --- |
| 51 | 6 | **上线验收** |  | 59d? | 2017-10-10 | 2017-12-29 |  | 0d |  | 224h |
| 52 | 6.1 | 文档编写、培训、KT Session |  | 20d | 2017-10-10 | 2017-11-06 | 7 | 39d | 业务分析 | 160h |
| 53 | 6.2 | 打包程序 |  | 2d | 2017-12-22 | 2017-12-25 | 46 | 0d | 架构师 | 16h |
| 54 | 6.3 | 上线检查列表 |  | 3d | 2017-12-22 | 2017-12-26 | 46 | 3d | 项目经理 | 24h |
| 55 | 6.4 | 上线部署 |  | 2d | 2017-12-26 | 2017-12-27 | 53 | 0d | 架构师 | 16h |
| 56 | 6.5 | 部署后测试 |  | 1d | 2017-12-28 | 2017-12-28 | 55 | 0d | 测试 | 8h |
| 57 | 6.6 | 上线 | milestone | 1d? | 2017-12-29 | 2017-12-29 | 56 | 0d |  |  |
